# comicsGuess

Schedule from MS Project, 2013-08-05 to 2013-09-27, A marks actual dates.

## Calendars

- ComicsGuess: Mon-Fri 08:00-09:00, 19:00-23:00; Sat-Sun 10:00-21:00.

## Resources

| Resource |
| --- |
| 虾 |
| 林 |
| 阿黄 |
| All |

## Schedule

| ID | WBS | Task | Type | Duration | Start | Finish | Predecessors | Complete | Remaining | Baseline start | Baseline finish | Baseline duration | Total slack | Free slack | Constraint | Resources | Work | Actual work |
| --- | --- | --- | --- | --- | --- | --- | --- | --- | --- | --- | --- | --- | --- | --- | --- | --- | --- | --- |
| 1 | 1 | **ComicsGuess** |  | 44d | 2013-08-05 A | 2013-09-27 |  | 5% | 42d | 2013-08-05 | 2013-08-20 | 13d? | 0d |  |  |  | 872h | 39.6h |
| 2 | 1.1 | **ST** |  | 5d | 2013-08-05 A | 2013-08-11 |  | 76% | 1.19d | 2013-08-05 | 2013-08-11 | 5d | 9d |  |  |  | 52h | 39.6h |
| 3 | 1.1.1 | 策划 |  | 5d | 2013-08-05 A | 2013-08-11 |  | 70% | 1.5d | 2013-08-05 | 2013-08-11 | 5d | 7.5d | 0d |  | 虾 | 40h | 28h |
| 4 | 1.1.2 | 开发环境 |  | 0.5d | 2013-08-06 A | 2013-08-06 A |  | 100% |  | 2013-08-06 | 2013-08-06 | 0.5d |  |  |  | 林 | 4h | 4h |
| 5 | 1.1.3 | 基础框架 |  | 0.5d | 2013-08-06 A | 2013-08-07 A | 4 | 100% |  | 2013-08-06 | 2013-08-07 | 0.5d |  |  |  | 林 | 4h | 4h |
| 6 | 1.1.4 | 立项相关文档 |  | 0.5d | 2013-08-07 A | 2013-08-08 | 5 | 90% | 0.05d | 2013-08-07 | 2013-08-08 | 0.5d | 11.88d | 2.88d |  | 林 | 4h | 3.6h |
| 7 | 1.2 | **Coding&UT** |  | 15.5d | 2013-08-11 | 2013-08-30 |  |  |  | 2013-08-05 | 2013-08-20 | 13d? | 7.5d | 0d |  |  | 292h |  |
| 8 | 1.2.1 | 美工(界面UI) |  | 8d | 2013-08-11 | 2013-08-28 | 3, 6 |  |  | 2013-08-11 | 2013-08-20 | 8d | 9d | 0d |  | 林 | 64h |  |
| 9 | 1.2.2 | 欢迎界面、主界面 |  | 1d | 2013-08-13 | 2013-08-14 | 3 |  |  | 2013-08-11 | 2013-08-12 | 1d? | 8.5d | 0d | start no earlier than 2013-08-13 | 虾 | 8h |  |
| 10 | 1.2.3 | 关卡选择 |  | 2d | 2013-08-14 | 2013-08-17 | 9 |  |  | 2013-08-05 | 2013-08-06 | 1d? | 8.5d | 0d |  | 虾 | 16h |  |
| 11 | 1.2.4 | 主猜 | milestone | 6d | 2013-08-11 | 2013-08-18 | 3 |  |  | 2013-08-05 | 2013-08-06 | 1d? | 7.5d | 0d |  | 阿黄 | 48h |  |
| 12 | 1.2.5 | 主猜里程碑 | milestone | 0d | 2013-08-18 | 2013-08-18 | 11 |  |  |  |  |  | 17d |  |  |  |  |  |
| 13 | 1.2.6 | 关卡编辑器 |  | 6d | 2013-08-18 | 2013-08-25 | 11 |  |  | 2013-08-05 | 2013-08-06 | 1d? | 7.5d | 0d |  | 林 | 48h |  |
| 14 | 1.2.7 | 关卡解析 |  | 0.5d | 2013-08-25 | 2013-08-25 | 13 |  |  | 2013-08-05 | 2013-08-06 | 1d? | 7.5d | 0d |  | 阿黄 | 4h |  |
| 15 | 1.2.8 | 每日挑战 |  | 3d | 2013-08-25 | 2013-08-30 | 14 |  |  | 2013-08-05 | 2013-08-06 | 1d? | 7.5d |  |  | 阿黄 | 24h |  |
| 16 | 1.2.9 | **第三方SDK接入** |  | 8d | 2013-08-17 | 2013-08-25 |  |  |  | 2013-08-05 | 2013-08-06 | 1d? | 8.5d |  |  |  | 64h |  |
| 17 | 1.2.9.1 | 广告 |  | 2d | 2013-08-17 | 2013-08-18 | 10 |  |  | 2013-08-05 | 2013-08-06 | 1d? | 8.5d | 0d |  | 虾 | 16h |  |
| 18 | 1.2.9.2 | 货币、支付 |  | 2d | 2013-08-18 | 2013-08-21 | 17 |  |  | 2013-08-05 | 2013-08-06 | 1d? | 8.5d | 0d |  | 虾 | 16h |  |
| 19 | 1.2.9.3 | 排名、成就等 |  | 2d | 2013-08-21 | 2013-08-24 | 18 |  |  | 2013-08-05 | 2013-08-06 | 1d? | 8.5d | 0d |  | 虾 | 16h |  |
| 20 | 1.2.9.4 | 社区、分享等 |  | 2d | 2013-08-24 | 2013-08-25 | 19 |  |  | 2013-08-05 | 2013-08-06 | 1d? | 8.5d | 0d |  | 虾 | 16h |  |
| 21 | 1.2.10 | 更新、关于等杂项 |  | 2d | 2013-08-25 | 2013-08-28 | 20 |  |  | 2013-08-05 | 2013-08-06 | 1d? | 8.5d |  |  | 虾 | 16h |  |
| 22 | 1.3 | coding结束 | milestone | 0d | 2013-08-05 | 2013-08-05 | 7 |  |  |  |  |  | -20.5d | 0d |  |  |  |  |
| 23 | 1.4 | **关卡编辑** |  | 40d | 2013-08-05 | 2013-09-22 |  |  |  | 2013-08-05 | 2013-08-06 | 1d? | 0d |  |  |  | 400h |  |
| 24 | 1.4.1 | 内容策划 |  | 30d | 2013-08-05 | 2013-09-09 |  |  |  | 2013-08-05 | 2013-08-06 | 1d? | 0d |  |  | All | 240h |  |
| 25 | 1.4.2 | 美工 |  | 10d | 2013-08-28 | 2013-09-08 | 13, 8 |  |  | 2013-08-05 | 2013-08-06 | 1d? | 11d |  |  | 林 | 80h |  |
| 26 | 1.4.3 | 编辑录入 |  | 10d | 2013-09-10 | 2013-09-22 | 24 |  |  | 2013-08-05 | 2013-08-06 | 1d? | 0d |  |  | All | 80h |  |
| 27 | 1.4.4 | 结合测试开始 | milestone | 0d | 2013-08-05 | 2013-08-05 |  |  |  |  |  |  | 40d |  |  |  |  |  |
| 28 | 1.5 | IT |  | 12d | 2013-08-30 | 2013-09-13 | 7 |  |  | 2013-08-05 | 2013-08-06 | 1d? | 7.5d |  |  | All | 96h |  |
| 29 | 1.6 | 准备上架 | milestone | 0d | 2013-09-22 | 2013-09-22 | 28, 7, 23 |  |  |  |  |  | 4d |  |  |  |  |  |
| 30 | 1.7 | 上架 |  | 4d | 2013-09-22 | 2013-09-27 | 28, 7, 23 |  |  | 2013-08-05 | 2013-08-06 | 1d? | 0d |  |  | All | 32h |  |
| 31 | 1.8 | 推广(持续推广，不计工时) | milestone | 0d | 2013-09-27 | 2013-09-27 | 30 |  |  | 2013-08-05 | 2013-08-06 | 1d? | 0d |  |  | All |  |  |
